# gp C

Schedule from MS Project, 2020-07-02 to 2021-06-10, 6 hours a day, costs in ৳, A marks actual dates.

## Calendars

- Standard: Mon-Fri 08:00-12:00, 13:00-17:00; Sat-Sun off. Exceptions (off unless hours are given): 2021-05-01 (May Day), 2021-05-08 to 2021-05-15 (Eid Ul Fitr + Mid Term Break).

## Resources

| Resource | Cost per use |
| --- | --- |
| Maj Rezoan |  |
| Lt Anindya |  |
| Flg Offr Nafiun |  |
| Offr Cdt Arnob |  |
| Offr Cdt Khan |  |
| Accelerometer | 1200 |
| Ambient Temperature Sensor | 700 |
| Heart rate Sensor | 1700 |
| Barometer | 1700 |
| Pulse Oximeter | 1200 |
| Fire Sensor | 900 |
| Arduino Uno | 500 |
| RF 433 MHz Transmitter | 4000 |
| AT mega 328 Microprocessor | 1000 |
| 3.7V 500 mAh Lithium Polymer Cell | 300 |
| 5 V Relay Switch | 30 |
| Laptop |  |
| Reference books |  |

## Schedule

| ID | WBS | Task | Type | Duration | Start | Finish | Predecessors | Complete | Remaining | Baseline 1 start | Baseline 1 finish | Total slack | Constraint | Resources | Work | Actual work | Cost | Actual cost |
| --- | --- | --- | --- | --- | --- | --- | --- | --- | --- | --- | --- | --- | --- | --- | --- | --- | --- | --- |
| 1 | 1 | **Health Monitoring of a Pilot using IoT Wrist Band** |  | 321.17d | 2020-07-02 A | 2021-06-10 |  | 79% | 66.5d | 2020-08-13 | 2020-12-08 | 0d |  |  | 3078h | 2445h | 13,230 | 13,230 |
| 2 | 1.1 | **Initialization** |  | 20d | 2020-07-02 A | 2020-07-23 A |  | 100% |  | 2020-08-13 | 2020-08-27 |  |  |  | 330h | 330h |  |  |
| 3 | 1.1.1 | Project Planning |  | 1w | 2020-07-02 A | 2020-07-07 A |  | 100% |  | 2020-08-13 | 2020-08-14 |  | start no earlier than 2020-07-02 | Maj Rezoan; Offr Cdt Arnob; Offr Cdt Khan; Flg Offr Nafiun; Lt Anindya | 150h | 150h |  |  |
| 4 | 1.1.2 | Project Proposal |  | 15d | 2020-07-07 A | 2020-07-23 A | 3 | 100% |  | 2020-08-14 | 2020-08-27 |  |  | Lt Anindya; Maj Rezoan | 180h | 180h |  |  |
| 5 | 1.1.3 | Project Approval | milestone | 0d | 2020-07-23 A | 2020-07-23 A | 4 | 100% |  | 2020-08-27 | 2020-08-27 |  |  | Flg Offr Nafiun; Maj Rezoan |  |  |  |  |
| 6 | 1.1.4 | Project Approval Completed | milestone | 0d | 2020-07-23 A | 2020-07-23 A | 5 | 100% |  |  |  |  |  |  |  |  |  |  |
| 7 | 1.2 | **Plan** |  | 35.33d | 2020-07-23 A | 2020-08-28 A |  | 100% |  | 2020-08-27 | 2020-09-24 |  |  |  | 252h | 252h |  |  |
| 8 | 1.2.1 | Macro Planning |  | 5d | 2020-07-23 A | 2020-08-14 A | 5 | 100% |  | 2020-08-27 | 2020-09-02 |  |  | Lt Anindya; Offr Cdt Khan; Maj Rezoan | 30h | 30h |  |  |
| 9 | 1.2.2 | Report submission | milestone | 0d | 2020-08-14 A | 2020-08-14 A | 8 | 100% |  |  |  |  |  | Flg Offr Nafiun; Maj Rezoan |  |  |  |  |
| 10 | 1.2.3 | Details Planning |  | 12d | 2020-08-14 A | 2020-08-27 A | 9 | 100% |  | 2020-09-02 | 2020-09-24 |  |  | Maj Rezoan; Offr Cdt Arnob; Offr Cdt Khan | 216h | 216h |  |  |
| 11 | 1.2.4 | Detail planning presentation |  | 1d | 2020-08-27 A | 2020-08-28 A | 10 | 100% |  |  |  |  |  | Maj Rezoan; Flg Offr Nafiun; Lt Anindya | 6h | 6h |  |  |
| 12 | 1.2.5 | Plan Complete | milestone | 0d | 2020-08-28 A | 2020-08-28 A | 11 | 100% |  |  |  |  |  |  |  |  |  |  |
| 13 | 1.3 | **Execution** |  | 264.83d | 2020-08-28 A | 2021-06-10 |  | 75% | 65.12d | 2020-09-24 | 2020-12-07 | 1d |  |  | 2466h | 1863h | 13,230 | 13,230 |
| 14 | 1.3.1 | **Concept** |  | 37d | 2020-08-28 A | 2020-10-07 A |  | 100% |  | 2020-09-24 | 2020-09-28 |  |  |  | 684h | 684h |  |  |
| 15 | 1.3.1.1 | A brief overview of the project |  | 12d | 2020-08-28 A | 2020-09-10 A | 11 | 100% |  |  |  |  |  | Lt Anindya; Offr Cdt Khan; Maj Rezoan | 144h | 144h |  |  |
| 16 | 1.3.1.2 | Study of Related books |  | 15d | 2020-09-10 A | 2020-09-25 A | 15 | 100% |  |  |  |  |  | Flg Offr Nafiun; Maj Rezoan; Offr Cdt Arnob; Offr Cdt Khan | 360h | 360h |  |  |
| 17 | 1.3.1.3 | Varification of the project models |  | 2w | 2020-09-25 A | 2020-10-07 A | 16 | 100% |  |  |  |  |  | Flg Offr Nafiun; Maj Rezoan; Offr Cdt Arnob | 180h | 180h |  |  |
| 18 | 1.3.1.4 | Concept Updated | milestone | 0d | 2020-10-07 A | 2020-10-07 A | 17 | 100% |  |  |  |  |  |  |  |  |  |  |
| 19 | 1.3.2 | **Collecting Materials** |  | 35d | 2020-10-07 A | 2020-11-12 A |  | 100% |  | 2020-09-28 | 2020-10-01 |  |  |  | 360h | 360h | 13,230 | 13,230 |
| 20 | 1.3.2.1 | Materials collection from online |  | 4w | 2020-10-07 A | 2020-10-28 A | 17 | 100% |  |  |  |  |  | 3.7V 500 mAh Lithium Polymer Cell; 5 V Relay Switch; Accelerometer; Ambient Temperature Sensor; Barometer; Fire Sensor; Heart rate Sensor; Pulse Oximeter; Reference books; Flg Offr Nafiun; Maj Rezoan | 120h | 120h | 7,730 | 7,730 |
| 21 | 1.3.2.2 | Materials collection from Shops |  | 2w | 2020-10-07 A | 2020-10-16 A | 17 | 100% |  |  |  |  |  | Arduino Uno; AT mega 328 Microprocessor; Laptop [0.1%]; RF 433 MHz Transmitter; Lt Anindya; Offr Cdt Arnob; Offr Cdt Khan | 60h | 60h | 5,500 | 5,500 |
| 22 | 1.3.2.3 | Return/Repurchase if not okay |  | 3w | 2020-10-28 A | 2020-11-12 A | 20 | 100% |  |  |  |  |  | Flg Offr Nafiun; Lt Anindya; Maj Rezoan | 180h | 180h |  |  |
| 23 | 1.3.2.4 | Materials Collected | milestone | 0d | 2020-11-12 A | 2020-11-12 A | 22 | 100% |  |  |  |  |  |  |  |  |  |  |
| 24 | 1.3.3 | **Designing** |  | 21d | 2021-03-22 A | 2021-04-12 A |  | 100% |  | 2020-10-01 | 2020-10-16 |  |  |  | 450h | 450h |  |  |
| 25 | 1.3.3.1 | Software Designing |  | 3w | 2021-03-22 A | 2021-04-06 A | 22 | 100% |  | 2020-10-01 | 2020-10-08 |  | start no earlier than 2021-03-22 | Maj Rezoan; Flg Offr Nafiun; Laptop [0.1%] | 180h | 180h |  |  |
| 26 | 1.3.3.2 | Hardware Designing |  | 3w | 2021-03-26 A | 2021-04-12 A | 22 | 100% |  | 2020-10-09 | 2020-10-16 |  | finish no earlier than 2021-04-12 | Offr Cdt Arnob; Offr Cdt Khan; Lt Anindya | 270h | 270h |  |  |
| 27 | 1.3.3.3 | Design Finished | milestone | 0d | 2021-04-12 A | 2021-04-12 A |  | 100% |  |  |  |  | start no earlier than 2021-04-12 |  |  |  |  |  |

| ID | WBS | Task | Type | Duration | Start | Finish | Predecessors | Complete | Remaining | Baseline 1 start | Baseline 1 finish | Total slack | Constraint | Resources | Work | Actual work |
| --- | --- | --- | --- | --- | --- | --- | --- | --- | --- | --- | --- | --- | --- | --- | --- | --- |
| 28 | 1.3.4 | **Development** |  | 31.16d | 2021-04-12 A | 2021-05-20 |  | 56% | 13.63d | 2020-10-16 | 2020-11-23 | 20.67d |  |  | 510h | 369h |
| 29 | 1.3.4.1 | Software Development |  | 4w | 2021-04-12 A | 2021-05-03 |  | 75% | 1w | 2020-10-16 | 2020-11-06 | 31d | start no earlier than 2021-04-12 | Maj Rezoan; Flg Offr Nafiun; Laptop [0.1%] | 240h | 180h |
| 30 | 1.3.4.2 | Hardware Development |  | 4w | 2021-04-16 A | 2021-05-07 | 26 | 53% | 1.9w | 2020-11-09 | 2020-11-23 | 0d | finish no earlier than 2021-05-03 | Offr Cdt Arnob; Offr Cdt Khan; Lt Anindya | 270h | 189h |
| 31 | 1.3.4.3 | Development Finished | milestone | 5.33d | 2021-05-03 A | 2021-05-20 | 30 |  | 5.33d |  |  | 20.67d | finish no earlier than 2021-05-07 |  |  |  |
| 32 | 1.3.5 | **Tests** |  | 24d | 2021-05-07 | 2021-06-09 |  |  |  | 2020-11-23 | 2020-11-30 | 0d |  |  | 432h |  |
| 33 | 1.3.5.1 | Analysis/On ground check | milestone | 7d | 2021-05-07 | 2021-05-21 | 30 |  |  |  |  | 0d |  | Maj Rezoan [51.7%]; Laptop [0.1%]; Offr Cdt Arnob [51.7%]; Offr Cdt Khan [51.7%]; Flg Offr Nafiun [51.7%]; Lt Anindya [51.7%] | 90h |  |
| 34 | 1.3.5.2 | Improvements |  | 3d | 2021-05-21 | 2021-05-25 | 33 |  |  | 2020-11-30 | 2020-12-07 | 0d |  | Maj Rezoan; Offr Cdt Arnob; Offr Cdt Khan; Flg Offr Nafiun; Lt Anindya | 90h |  |
| 35 | 1.3.5.3 | Documentation | milestone | 14d | 2021-05-26 | 2021-06-09 | 34 |  |  |  |  | 0d |  | Flg Offr Nafiun; Lt Anindya; Maj Rezoan; Reference books | 252h |  |
| 36 | 1.3.5.4 | Testing Done | milestone | 0d | 2021-06-09 | 2021-06-09 | 35 |  |  |  |  | 2d |  |  |  |  |
| 37 | 1.3.6 | Delivery of Project | milestone | 1d | 2021-06-09 | 2021-06-10 | 35 |  |  | 2020-12-07 | 2020-12-07 | 0d |  | Lt Anindya; Flg Offr Nafiun; Maj Rezoan; Offr Cdt Arnob; Offr Cdt Khan | 30h |  |
| 38 | 1.4 | **Closing** |  | 1d | 2021-06-10 | 2021-06-10 |  |  |  | 2020-12-08 | 2020-12-08 | 0d |  |  | 30h |  |
| 39 | 1.4.1 | Closing Meeting |  | 1d | 2021-06-10 | 2021-06-10 | 37 |  |  | 2020-12-08 | 2020-12-08 | 0d |  | Offr Cdt Arnob; Offr Cdt Khan; Lt Anindya; Flg Offr Nafiun; Maj Rezoan | 30h |  |
